# 陆缆及气象站施工

Schedule from a web Gantt chart, 2025-12-17 to 2025-12-28.
Every day is a working day

## Schedule

| ID | WBS | Task | Duration | Start | Finish | Predecessors | Status |
| --- | --- | --- | --- | --- | --- | --- | --- |
| 2 | 1 | **陆缆** | 12d | 2025-12-17 | 2025-12-28 |  |  |
| 3 | 1.1 | **5-8号井** | 5d | 2025-12-18 | 2025-12-22 |  |  |
| 4 | 1.1.1 | 井体 | 1d | 2025-12-18 | 2025-12-18 |  |  |
| 5 | 1.1.2 | 土方开挖及混凝土垫层浇筑 | 1d | 2025-12-18 | 2025-12-18 |  |  |
| 6 | 1.1.3 | 底模钢筋模板支设 | 1d | 2025-12-19 | 2025-12-19 | 5 | waiting |
| 7 | 1.1.4 | 底模浇筑 | 1d | 2025-12-20 | 2025-12-20 | 6 | waiting |
| 8 | 1.1.5 | 井身钢筋模板支设 | 1d | 2025-12-21 | 2025-12-21 | 7 | waiting |
| 9 | 1.1.6 | 井身浇筑 | 1d | 2025-12-22 | 2025-12-22 | 8 | waiting |
| 10 | 1.2 | **1-4号井** | 5d | 2025-12-24 | 2025-12-28 |  |  |
| 11 | 1.2.1 | 土方开挖及混凝土垫层浇筑 | 1d | 2025-12-24 | 2025-12-24 |  |  |
| 12 | 1.2.2 | 底模钢筋模板支设 | 1d | 2025-12-25 | 2025-12-25 | 11 | waiting |
| 13 | 1.2.3 | 底模浇筑 | 1d | 2025-12-26 | 2025-12-26 | 12 | waiting |
| 14 | 1.2.4 | 井身钢筋模板支设 | 1d | 2025-12-27 | 2025-12-27 | 13 | waiting |
| 15 | 1.2.5 | 井身浇筑 | 1d | 2025-12-28 | 2025-12-28 | 14 | waiting |
| 16 | 1.3 | **9-14号井** | 3d | 2025-12-18 | 2025-12-20 |  |  |
| 17 | 1.3.1 | 底模浇筑 | 1d | 2025-12-18 | 2025-12-18 |  |  |
| 18 | 1.3.2 | 井身钢筋模板支设 | 1d | 2025-12-19 | 2025-12-19 | 17 | waiting |
| 19 | 1.3.3 | 井身浇筑 | 1d | 2025-12-20 | 2025-12-20 | 18 | waiting |
| 20 | 1.4 | **15-18号井** | 2d | 2025-12-17 | 2025-12-18 |  |  |
| 21 | 1.4.1 | 井身钢筋模板支设 | 1d | 2025-12-17 | 2025-12-17 |  |  |
| 22 | 1.4.2 | 井身浇筑 | 1d | 2025-12-18 | 2025-12-18 | 21 | waiting |
| 23 | 1.5 | 19-26号井（已完成） | 1d | 2025-12-17 | 2025-12-17 |  |  |
| 24 | 1.6 | 28-31号井（已完成） | 1d | 2025-12-17 | 2025-12-17 |  |  |
| 25 | 1.7 | **32-36号井** | 1d | 2025-12-18 | 2025-12-18 |  |  |
| 26 | 1.7.1 | 井身浇筑 | 1d | 2025-12-18 | 2025-12-18 |  |  |

| ID | WBS | Task | Duration | Start | Finish | Predecessors | Status |
| --- | --- | --- | --- | --- | --- | --- | --- |
| 27 | 2 | **气象站** | 12d | 2025-12-17 | 2025-12-28 |  |  |
| 28 | 2.1 | **挡土墙** | 6d | 2025-12-17 | 2025-12-22 |  |  |
| 29 | 2.1.1 | 挡土墙砌筑 | 3d | 2025-12-17 | 2025-12-19 |  |  |
| 30 | 2.1.2 | 挡土墙土方回填 | 1d | 2025-12-22 | 2025-12-22 |  |  |
| 31 | 2.2 | **气象站基础** | 4d | 2025-12-23 | 2025-12-26 |  |  |
| 32 | 2.2.1 | 基础开挖回填及垫层浇筑 | 1d | 2025-12-23 | 2025-12-23 | 30 | waiting |
| 33 | 2.2.2 | 基础钢筋模板 | 2d | 2025-12-24 | 2025-12-25 | 32 | waiting |
| 34 | 2.2.3 | 基础浇筑 | 1d | 2025-12-26 | 2025-12-26 | 33 | waiting |
| 35 | 2.3 | 栅栏安装 | 2d | 2025-12-27 | 2025-12-28 | 34 | waiting |
